# projeto_smartbottle

Schedule from MS Project, 2025-10-13 to 2025-12-10, A marks actual dates.

## Calendars

- Padrão: Mon-Fri 08:00-12:00, 13:00-17:00; Sat-Sun off.

## Resources

| Resource |
| --- |
| Paulo |
| Alexandre |
| Diogo |

## Schedule

| ID | WBS | Task | Type | Duration | Start | Finish | Predecessors | Complete | Baseline start | Baseline finish | Baseline duration | Resources | Work | Actual work |
| --- | --- | --- | --- | --- | --- | --- | --- | --- | --- | --- | --- | --- | --- | --- |
| 1 | 1 | **PROJECTO** |  | 43d? | 2025-10-13 A | 2025-12-10 A |  | 100% | 2025-10-13 | 2025-12-10 | 43d |  | 784h | 784h |
| 2 | 1.1 | Pesquisa e aquisição do material |  | 15d | 2025-10-13 A | 2025-10-31 A |  | 100% | 2025-10-13 | 2025-10-31 | 15d |  |  |  |
| 3 | 1.2 | **Configuração do ambiente (Base de dados, Servidor)** |  | 6d | 2025-10-13 A | 2025-10-20 A |  | 100% | 2025-10-13 | 2025-10-20 | 6d |  | 40h | 40h |
| 4 | 1.2.1 | Instalar o sql server |  | 1d | 2025-10-13 A | 2025-10-13 A |  | 100% | 2025-10-13 | 2025-10-13 | 1d | Alexandre | 8h | 8h |
| 5 | 1.2.2 | Criar base de dados e tabelas |  | 1d | 2025-10-14 A | 2025-10-14 A | 4 | 100% | 2025-10-14 | 2025-10-14 | 1d | Alexandre | 8h | 8h |
| 6 | 1.2.3 | Instalar node js e vs code |  | 1d | 2025-10-15 A | 2025-10-15 A | 5 | 100% | 2025-10-15 | 2025-10-15 | 1d | Alexandre | 8h | 8h |
| 7 | 1.2.4 | iniciar projeto API e instalar dependências |  | 2d | 2025-10-16 A | 2025-10-20 A | 6 | 100% | 2025-10-16 | 2025-10-20 | 2d | Alexandre | 16h | 16h |
| 8 | 1.3 | **Design da Interface** |  | 5d | 2025-10-13 A | 2025-10-17 A |  | 100% | 2025-10-13 | 2025-10-17 | 5d |  | 56h | 56h |
| 9 | 1.3.1 | Definir o fluxo de navegação e criar rascunho |  | 2d | 2025-10-13 A | 2025-10-14 A |  | 100% | 2025-10-13 | 2025-10-14 | 2d | Diogo | 16h | 16h |
| 10 | 1.3.2 | Desenvolver Mockups |  | 2d | 2025-10-15 A | 2025-10-16 A | 9 | 100% | 2025-10-15 | 2025-10-16 | 2d | Diogo | 16h | 16h |
| 11 | 1.3.3 | Revisão do desgin com a equipa |  | 1d | 2025-10-17 A | 2025-10-17 A | 10 | 100% | 2025-10-17 | 2025-10-17 | 1d | Diogo; Alexandre; Paulo | 24h | 24h |
| 12 | 1.4 | **Criação do protótipo via simulador** |  | 4d | 2025-10-13 A | 2025-10-16 A |  | 100% | 2025-10-13 | 2025-10-16 | 4d |  | 32h | 32h |
| 13 | 1.4.1 | Montagem do circuito virtual no tinkercad |  | 2d | 2025-10-13 A | 2025-10-14 A |  | 100% | 2025-10-13 | 2025-10-14 | 2d | Paulo | 16h | 16h |
| 14 | 1.4.2 | Desenvolvimento do codigo |  | 1d | 2025-10-15 A | 2025-10-15 A | 13 | 100% | 2025-10-15 | 2025-10-15 | 1d | Paulo | 8h | 8h |
| 15 | 1.4.3 | Simulação e validação funcional |  | 1d | 2025-10-16 A | 2025-10-16 A | 14 | 100% | 2025-10-16 | 2025-10-16 | 1d | Paulo | 8h | 8h |
| 16 | 1.5 | **Montagem do circuito** |  | 3d | 2025-11-03 A | 2025-11-05 A | 2, 12 | 100% | 2025-11-03 | 2025-11-05 | 3d |  | 24h | 24h |
| 17 | 1.5.1 | Preparação da breadboard e componentes |  | 1d | 2025-11-03 A | 2025-11-03 A | 15 | 100% | 2025-11-03 | 2025-11-03 | 1d | Paulo | 8h | 8h |
| 18 | 1.5.2 | Conexão dos sensores ao microcontrolador |  | 1d | 2025-11-04 A | 2025-11-04 A | 17 | 100% | 2025-11-04 | 2025-11-04 | 1d | Paulo | 8h | 8h |
| 19 | 1.5.3 | Teste da alimentação e conectividade básica |  | 1d | 2025-11-05 A | 2025-11-05 A | 18 | 100% | 2025-11-05 | 2025-11-05 | 1d | Paulo | 8h | 8h |
| 20 | 1.6 | **Desenvolvimento da API** |  | 8d | 2025-10-21 A | 2025-10-30 A | 3 | 100% | 2025-10-21 | 2025-10-30 | 8d |  | 64h | 64h |
| 21 | 1.6.1 | Implementação da autenticação de utilizadores |  | 4d | 2025-10-21 A | 2025-10-24 A | 7 | 100% | 2025-10-21 | 2025-10-24 | 4d | Alexandre | 32h | 32h |
| 22 | 1.6.2 | Implementação dos endpoints de consumos de dados |  | 3d | 2025-10-27 A | 2025-10-29 A | 21 | 100% | 2025-10-27 | 2025-10-29 | 3d | Alexandre | 24h | 24h |
| 23 | 1.6.3 | Teste e validacao da API com o Postman |  | 1d | 2025-10-30 A | 2025-10-30 A | 22 | 100% | 2025-10-30 | 2025-10-30 | 1d | Alexandre | 8h | 8h |
| 24 | 1.7 | **Comfiguração do ambiente de desenvolvimento movel** |  | 2d | 2025-10-20 A | 2025-10-21 A | 8 | 100% | 2025-10-20 | 2025-10-21 | 2d |  | 16h | 16h |
| 25 | 1.7.1 | Instalação da framework de desenvolvimento |  | 1d | 2025-10-20 A | 2025-10-20 A | 11 | 100% | 2025-10-20 | 2025-10-20 | 1d | Diogo | 8h | 8h |
| 26 | 1.7.2 | Configuração do simulador Android/IOS | milestone | 0d | 2025-10-20 A | 2025-10-20 A | 25 | 100% | 2025-10-20 | 2025-10-20 | 0d | Diogo |  |  |
| 27 | 1.7.3 | Criação da base e execução do projeto |  | 1d | 2025-10-21 A | 2025-10-21 A | 26 | 100% | 2025-10-21 | 2025-10-21 | 1d | Diogo | 8h | 8h |

| ID | WBS | Task | Type | Duration | Start | Finish | Predecessors | Complete | Baseline start | Baseline finish | Baseline duration | Resources | Work | Actual work |
| --- | --- | --- | --- | --- | --- | --- | --- | --- | --- | --- | --- | --- | --- | --- |
| 28 | 1.8 | **Programação do arduino e sensores** |  | 5d | 2025-11-05 A | 2025-11-12 A | 16 | 100% | 2025-11-05 | 2025-11-12 | 5d |  | 40h | 40h |
| 29 | 1.8.1 | Instalação e configuração das bibliotecas dos sensores | milestone | 0d | 2025-11-05 A | 2025-11-05 A | 19 | 100% | 2025-11-05 | 2025-11-05 | 0d | Paulo |  |  |
| 30 | 1.8.2 | Desenvolvimento do código para leitura e calibração |  | 4d | 2025-11-06 A | 2025-11-11 A | 29 | 100% | 2025-11-06 | 2025-11-11 | 4d | Paulo | 32h | 32h |
| 31 | 1.8.3 | Integração final e lógica do loop principal |  | 1d | 2025-11-12 A | 2025-11-12 A | 30 | 100% | 2025-11-12 | 2025-11-12 | 1d | Paulo | 8h | 8h |
| 32 | 1.9 | **Desenvolvimento do front end do website** |  | 7d | 2025-10-31 A | 2025-11-10 A | 20 | 100% | 2025-10-31 | 2025-11-10 | 7d |  | 56h | 56h |
| 33 | 1.9.1 | Configuração do projeto e criação da estrutura de componentes |  | 1d | 2025-10-31 A | 2025-10-31 A | 23 | 100% | 2025-10-31 | 2025-10-31 | 1d | Alexandre | 8h | 8h |
| 34 | 1.9.2 | Construir a página de login |  | 3d | 2025-11-03 A | 2025-11-05 A | 33 | 100% | 2025-11-03 | 2025-11-05 | 3d | Alexandre | 24h | 24h |
| 35 | 1.9.3 | Construir a página do dashboard |  | 3d | 2025-11-06 A | 2025-11-10 A | 34 | 100% | 2025-11-06 | 2025-11-10 | 3d | Alexandre | 24h | 24h |
| 36 | 1.10 | **Desenvolvimento das telas da aplicação** |  | 8d | 2025-10-22 A | 2025-10-31 A | 24 | 100% | 2025-10-22 | 2025-10-31 | 8d |  | 64h | 64h |
| 37 | 1.10.1 | Implementação da navegação e das telas base |  | 2d | 2025-10-22 A | 2025-10-23 A | 27 | 100% | 2025-10-22 | 2025-10-23 | 2d | Diogo | 16h | 16h |
| 38 | 1.10.2 | Construção dos componentes visuias de login/registro |  | 3d | 2025-10-24 A | 2025-10-28 A | 37 | 100% | 2025-10-24 | 2025-10-28 | 3d | Diogo | 24h | 24h |
| 39 | 1.10.3 | Construção dos componentes visuais do dashboard principal |  | 3d | 2025-10-29 A | 2025-10-31 A | 38 | 100% | 2025-10-29 | 2025-10-31 | 3d | Diogo | 24h | 24h |
| 40 | 1.11 | **Calibração dos sensores** |  | 2d | 2025-11-12 A | 2025-11-14 A | 28 | 100% | 2025-11-12 | 2025-11-14 | 2d |  | 16h | 16h |
| 41 | 1.11.1 | Calibração da função de tara (Balança) | milestone | 0d | 2025-11-12 A | 2025-11-12 A | 31 | 100% | 2025-11-12 | 2025-11-12 | 0d | Paulo |  |  |
| 42 | 1.11.2 | Determinar o fator de calibração do peso |  | 1d | 2025-11-13 A | 2025-11-13 A | 41 | 100% | 2025-11-13 | 2025-11-13 | 1d | Paulo | 8h | 8h |
| 43 | 1.11.3 | Testes de precisão e ajustes |  | 1d | 2025-11-14 A | 2025-11-14 A | 42 | 100% | 2025-11-14 | 2025-11-14 | 1d | Paulo | 8h | 8h |
| 44 | 1.12 | **Ligação do front end do site á API** |  | 3d | 2025-11-11 A | 2025-11-13 A | 32 | 100% | 2025-11-11 | 2025-11-13 | 3d |  | 24h | 24h |
| 45 | 1.12.1 | Implementação da lógica de autenticação |  | 1d | 2025-11-11 A | 2025-11-11 A | 35 | 100% | 2025-11-11 | 2025-11-11 | 1d | Alexandre | 8h | 8h |
| 46 | 1.12.2 | Integração do dashboard com os endpoints de dados |  | 1d | 2025-11-12 A | 2025-11-12 A | 45 | 100% | 2025-11-12 | 2025-11-12 | 1d | Alexandre | 8h | 8h |
| 47 | 1.12.3 | Gestão do estado e tratamento de erros |  | 1d | 2025-11-13 A | 2025-11-13 A | 46 | 100% | 2025-11-13 | 2025-11-13 | 1d | Alexandre | 8h | 8h |
| 48 | 1.13 | **Implementação da lógica com dados simulados** |  | 4d | 2025-11-03 A | 2025-11-06 A | 36 | 100% | 2025-11-03 | 2025-11-06 | 4d |  | 32h | 32h |
| 49 | 1.13.1 | Implementação da navegação e gestão do estado da autenticação |  | 2d | 2025-11-03 A | 2025-11-04 A | 39 | 100% | 2025-11-03 | 2025-11-04 | 2d | Diogo | 16h | 16h |
| 50 | 1.13.2 | Criação de um serviço de dados simulados |  | 1d | 2025-11-05 A | 2025-11-05 A | 49 | 100% | 2025-11-05 | 2025-11-05 | 1d | Diogo | 8h | 8h |
| 51 | 1.13.3 | Ligar a interface do dashboard á logica dos dados simulados |  | 1d | 2025-11-06 A | 2025-11-06 A | 50 | 100% | 2025-11-06 | 2025-11-06 | 1d | Diogo | 8h | 8h |

| ID | WBS | Task | Type | Duration | Start | Finish | Predecessors | Complete | Baseline start | Baseline finish | Baseline duration | Resources | Work | Actual work |
| --- | --- | --- | --- | --- | --- | --- | --- | --- | --- | --- | --- | --- | --- | --- |
| 52 | 1.14 | **Implementação da comunicação bluetooth** |  | 5d | 2025-11-17 A | 2025-11-21 A | 40 | 100% | 2025-11-17 | 2025-11-21 | 5d |  | 64h | 64h |
| 53 | 1.14.1 | Configurar o firmware para enviar dados via bluetooth |  | 2d | 2025-11-17 A | 2025-11-18 A | 43 | 100% | 2025-11-17 | 2025-11-18 | 2d | Paulo | 16h | 16h |
| 54 | 1.14.2 | Desenvolver lógica na app para connectar ao dispositivo |  | 2d | 2025-11-19 A | 2025-11-20 A | 53 | 100% | 2025-11-19 | 2025-11-20 | 2d | Paulo; Diogo | 32h | 32h |
| 55 | 1.14.3 | Implementar a tranferência e validação de dados |  | 1d | 2025-11-21 A | 2025-11-21 A | 54 | 100% | 2025-11-21 | 2025-11-21 | 1d | Paulo; Diogo | 16h | 16h |
| 56 | 1.15 | Construção da estrutura física e montagem final |  | 4d | 2025-11-24 A | 2025-11-27 A | 55 | 100% | 2025-11-24 | 2025-11-27 | 4d | Paulo | 32h | 32h |
| 57 | 1.16 | Embelezamento gráfico |  | 4d? | 2025-11-28 A | 2025-12-04 A | 56 | 100% |  |  |  | Diogo; Alexandre | 32h | 32h |
| 58 | 1.17 | Integração hardware e aplicação movel |  | 3d | 2025-11-14 A | 2025-11-18 A | 48, 44 | 100% | 2025-11-14 | 2025-11-21 | 4d | Alexandre; Diogo | 48h | 48h |
| 59 | 1.18 | Integração aplicação movel ao backend |  | 3d | 2025-11-28 A | 2025-12-02 A | 56, 51 | 100% | 2025-11-28 | 2025-12-02 | 3d | Paulo; Diogo | 48h | 48h |
| 60 | 1.19 | Testes end-to-end do sistema completo |  | 3d | 2025-12-03 A | 2025-12-05 A | 59 | 100% | 2025-12-03 | 2025-12-05 | 3d | Alexandre | 24h | 24h |
| 61 | 1.20 | Testes finais e resolução de bugs |  | 3d | 2025-12-08 A | 2025-12-10 A | 60 | 100% | 2025-12-08 | 2025-12-10 | 3d | Alexandre; Paulo; Diogo | 72h | 72h |
| 62 | 1.21 | Conclusão do projeto | milestone | 0d | 2025-12-10 A | 2025-12-10 A | 61 | 100% | 2025-12-10 | 2025-12-10 | 0d |  |  |  |
